How a schedule from MS Project changed from version to version. A marks actual dates.

## Version 1 (saved 2019-12-25)

Note of the change: Bis Kapitel 8

| ID | WBS | Task | Duration | Start | Finish | Total float |
| --- | --- | --- | --- | --- | --- | --- |
| 1 | 1 | **<Neuer Sammelvorgang>** | 1d | 2019-12-25 | 2019-12-25 | 0d |
| 2 | 1.1 | **<Neuer Sammelvorgang>** | 1d | 2019-12-25 | 2019-12-25 | 0d |
| 3 |  | <Neuer Vorgang> | 1d | 2019-12-25 | 2019-12-25 |  |
| 4 | 1.1.2 | **<Neuer Sammelvorgang>** | 1d | 2019-12-25 | 2019-12-25 | 0d |
| 5 |  | <Neuer Vorgang> | 1d | 2019-12-25 | 2019-12-25 |  |

## Version 2 (saved 2019-12-26)

Note of the change: Bis Kapitel 9.1

Last finish 2019-12-25 → 2018-01-31 (-693d).

Added:

| ID | Task | Duration | Start | Finish | Predecessors |
| --- | --- | --- | --- | --- | --- |
| 3 | Projektleitung | 300d | 2016-12-01 | 2018-01-24 |  |
| 4 | Steuerung | 300d | 2016-12-01 | 2018-01-24 |  |
| 5 | Änderungsmanagement | 300d | 2016-12-01 | 2018-01-24 |  |
| 8 | Definition schreiben | 50d | 2016-12-01 | 2017-02-08 |  |
| 10 | **Entwicklung** | 129d | 2017-03-01 | 2017-08-28 | 7 |
| 11 | Aufbau Testsystem | 10d | 2017-03-01 | 2017-03-14 |  |
| 12 | Ausarbeitung Softwarearchitektur | 30d | 2017-03-01 | 2017-04-11 |  |
| 13 | Entwicklung | 50d | 2017-04-12 | 2017-06-20 | 11, 12 |
| 14 | Interne Abnahme | 5d | 2017-06-21 | 2017-06-27 | 13 |
| 15 | Dokumentation | 100d | 2017-03-01 | 2017-07-18 |  |
| 16 | **Maschinenintegration** | 23d | 2017-08-29 | 2017-09-28 | 10 |
| 17 | Integration Fremdmaschine | 10d | 2017-08-29 | 2017-09-11 |  |
| 18 | Schnittstellentest | 1d | 2017-09-12 | 2017-09-12 | 17 |
| 19 | 1h Testlauf | 1d | 2017-09-13 | 2017-09-13 | 18 |
| 20 | **Testläufe** | 42d | 2017-09-29 | 2017-11-27 | 16 |
| 21 | Testlauf 1 | 10d | 2017-09-29 | 2017-10-12 |  |
| 22 | Testlauf 2 | 10d | 2017-09-29 | 2017-10-12 |  |
| 23 | Testlauf 3 | 10d | 2017-09-29 | 2017-10-12 |  |
| 24 | Testlauf 4 | 10d | 2017-09-29 | 2017-10-12 |  |
| 25 | **Abnahme** | 14d | 2017-11-28 | 2017-12-15 | 20 |
| 26 | Abnahme-Testlauf 1 | 2d | 2017-11-28 | 2017-11-29 |  |
| 27 | Abnahme-Testlauf 2 | 2d | 2017-11-28 | 2017-11-29 |  |
| 28 | Abnahme-Testlauf 3 | 2d | 2017-11-28 | 2017-11-29 |  |
| 29 | Abnahme-Testlauf 4 | 2d | 2017-11-28 | 2017-11-29 |  |
| 30 | Abnahme-Schnittstelle | 1d | 2017-11-28 | 2017-11-28 |  |
| 31 | Abnahme-Bedienung Maschine | 2d | 2017-11-28 | 2017-11-29 |  |
| 32 | Abnahmeprotokoll Erstellung und Unterschrift | 2d | 2017-11-28 | 2017-11-29 |  |
| 33 | **Auslieferung** | 30d | 2017-12-18 | 2018-01-26 | 25 |
| 34 | Versanddokumentation | 5d | 2017-12-18 | 2017-12-22 |  |
| 35 | Versand vom Equipment | 24d | 2017-12-25 | 2018-01-25 | 34 |

Changed:

| ID | Task | Start | Finish | Duration | Total float | Predecessors | Other |
| --- | --- | --- | --- | --- | --- | --- | --- |
| 1 | **Anbindung von Fremdmaschinen in das Uhlmann SCADA System** | 2019-12-25 → 2016-12-01 (-1119d) | 2019-12-25 → 2018-01-31 (-693d) | 1d → 305d | 0d → none |  | was named <Neuer Sammelvorgang> |
| 2 | **Projektmanagement** | 2019-12-25 → 2016-12-01 (-1119d) | 2019-12-25 → 2018-01-25 (-699d) | 1d → 301d | 0d → none |  | was named <Neuer Sammelvorgang> |
| 6 | Qualitätsmanagement | 2019-12-25 → 2016-12-01 (-1119d) | 2019-12-25 → 2018-01-24 (-700d) | 1d → 300d | none → 1d |  | was named <Neuer Vorgang> |
| 7 | **Definition** | 2019-12-25 → 2016-12-01 (-1119d) | 2019-12-25 → 2017-02-28 (-1030d) | 1d → 64d | 0d → none |  | was named <Neuer Sammelvorgang> |
| 9 | Definition prüfen | 2019-12-25 → 2017-02-09 (-1049d) | 2019-12-25 → 2017-02-28 (-1030d) | 1d → 14d | none → 0d | none → 8 | was named <Neuer Vorgang> |
